# GASTRO-SIM – Cronograma v1.0

Schedule from GanttProject, 2026-10-03 to 2026-11-29.
Universidad Santiago de Cali – Equipo ITEVOLUTION
Línea base del cronograma de GASTRO-SIM. Calendario de 7 días; dedicación supuesta 3 h por persona y día. Hitos con duración 0 (rombos).

## Calendars

- Project calendar: Mon-Sun working.

## Resources

| Resource |
| --- |
| Emmanuel Ospina |
| Jahan Chará |
| Diego Agudelo |
| Nestor Velasco |
| Cristian Cruz |

## Schedule

| ID | WBS | Task | Type | Duration | Start | Finish | Predecessors | Complete | Resources |
| --- | --- | --- | --- | --- | --- | --- | --- | --- | --- |
| 1 | 1 | **Hitos del proyecto** |  | 1d | 2026-10-03 | 2026-10-03 |  |  |  |
| 2 | 1.1 | H01 · Proyecto iniciado: equipo y roles definidos | milestone | 0d | 2026-10-03 | 2026-10-03 |  | 100% |  |
| 3 | 1.2 | H02 · Acta de Constitución y Matriz de Partes Interesadas entregadas | milestone | 0d | 2026-10-06 | 2026-10-06 | 16, 17 | 100% |  |
| 4 | 1.3 | H03 · Requisitos aprobados por el Propietario del Proyecto | milestone | 0d | 2026-10-11 | 2026-10-11 | 19, 20, 21 | 100% |  |
| 5 | 1.4 | H04 · Línea base del alcance y del cronograma establecida (v0.1) | milestone | 0d | 2026-10-11 | 2026-10-11 | 23, 24, 25, 26 | 100% |  |
| 6 | 1.5 | H05 · Plan de gestión de la calidad entregado | milestone | 0d | 2026-10-18 | 2026-10-18 | 27 |  |  |
| 7 | 1.6 | H06 · Prototipo técnico 3D validado | milestone | 0d | 2026-10-21 | 2026-10-21 | 37 |  |  |
| 8 | 1.7 | H07 · Diseño del software completo | milestone | 0d | 2026-10-21 | 2026-10-21 | 33, 34, 35, 36, 37 |  |  |
| 9 | 1.8 | H08 · Versión v0.5 aceptada (fin del ciclo TSP 1) | milestone | 0d | 2026-10-25 | 2026-10-25 | 33, 36, 37, 48, 49, 50, 62, 82, 83, 85, 86, 87, 88 |  |  |
| 10 | 1.9 | H09 · Primer caso clínico generado por la IA de extremo a extremo | milestone | 0d | 2026-11-08 | 2026-11-08 | 41, 53 |  |  |
| 11 | 1.10 | H10 · Versión v0.9 aceptada (flujo completo integrado) | milestone | 0d | 2026-11-15 | 2026-11-15 | 39, 40, 41, 42, 43, 44, 46, 51, 52, 53, 54, 55, 56, 57, 59, 63, 64, 66, 67, 68, 69, 70, 71, 72, 74, 75, 76, 77, 89, 91 |  |  |
| 12 | 1.11 | H11 · Pruebas del software completadas | milestone | 0d | 2026-11-22 | 2026-11-22 | 96, 97, 98, 99 |  |  |
| 13 | 1.12 | H12 · Versión 1.0 aceptada y demostración realizada | milestone | 0d | 2026-11-29 | 2026-11-29 | 103, 104 |  |  |
| 14 | 1.13 | H13 · Proyecto cerrado | milestone | 0d | 2026-11-29 | 2026-11-29 | 102, 105 |  |  |
| 15 | 2 | **Inicio** |  | 1d | 2026-10-03 | 2026-10-03 |  |  |  |
| 16 | 2.1 | 1101 · Elaborar el Acta de Constitución del Proyecto |  | 3d | 2026-10-03 | 2026-10-05 |  | 100% | Emmanuel Ospina |
| 17 | 2.2 | 1102 · Elaborar la Matriz de Partes Interesadas |  | 2d | 2026-10-04 | 2026-10-05 |  | 100% | Emmanuel Ospina |
| 18 | 3 | **Análisis** |  | 1d | 2026-10-05 | 2026-10-05 |  |  |  |
| 19 | 3.1 | 2101 · Especificar los requisitos y su trazabilidad |  | 7d | 2026-10-05 | 2026-10-11 |  | 100% | Jahan Chará |
| 20 | 3.2 | 2201 · Modelar el diagrama de casos de uso |  | 7d | 2026-10-05 | 2026-10-11 |  | 100% | Jahan Chará |
| 21 | 3.3 | 2301 · Priorizar los requisitos con MoSCoW |  | 7d | 2026-10-05 | 2026-10-11 |  | 100% | Emmanuel Ospina |
| 22 | 4 | **Planeación** |  | 1d | 2026-10-11 | 2026-10-11 |  |  |  |
| 23 | 4.1 | 1201 · Elaborar el Plan de Gestión del Alcance |  | 1d | 2026-10-11 | 2026-10-11 | 4 | 100% | Emmanuel Ospina |
| 24 | 4.2 | 1202 · Crear la EDT y su diccionario |  | 1d | 2026-10-11 | 2026-10-11 | 4 | 100% | Jahan Chará |
| 25 | 4.3 | 1203 · Elaborar el plan de cronograma, la lista de actividades y la lista de hitos |  | 1d | 2026-10-11 | 2026-10-11 | 24 | 100% | Jahan Chará |
| 26 | 4.4 | 1303 · Configurar el repositorio y el tablero del proyecto |  | 1d | 2026-10-11 | 2026-10-11 | 24 | 100% | Cristian Cruz |
| 27 | 4.5 | 1204 · Elaborar el Plan de Gestión de la Calidad |  | 2d | 2026-10-12 | 2026-10-13 | 5 |  | Nestor Velasco |
| 28 | 4.6 | 1304 · Elaborar el plan de pruebas y calidad del software |  | 1d | 2026-10-14 | 2026-10-14 | 27 |  | Nestor Velasco |

Notes:
- 2: Obligatorio. Verificación: Registro del equipo ITEVOLUTION y de los roles en Moodle (archivo «Grupo y roles»).
- 3: Obligatorio. Verificación: Entrega en Moodle y visto bueno del Propietario del Proyecto.
- 4: Obligatorio. Verificación: Correo de retroalimentación del Propietario con visto bueno («podrán construir el plan del alcance») y versión v1.3 de los artefactos.
- 5: Obligatorio. Verificación: Plan de alcance, EDT, plan de cronograma, lista de actividades y lista de hitos entregados en Moodle; etiqueta v0.1 en GitHub.
- 6: Obligatorio. Verificación: Entrega en Moodle y revisión del Propietario.
- 7: Opcional. Verificación: Demostración interna en la reunión TSP: cámara que recorre la ruta y captura un hallazgo de prueba.
- 8: Obligatorio. Verificación: Documento de diseño revisado por el Proveedor de Soluciones y publicado en el repositorio.
- 9: Obligatorio. Verificación: Release v0.5 en GitHub, acta de aceptación firmada por el Propietario y postmortem del ciclo 1.
- 10: Opcional. Verificación: Demostración interna: un caso generado, validado y mostrado en la escena 3D.
- 11: Obligatorio. Verificación: Release v0.9 en GitHub, acta de aceptación del Propietario y postmortem del ciclo 2.
- 12: Obligatorio. Verificación: Reporte de pruebas funcionales, de rendimiento y de usabilidad (SUS ≥ 68) aprobado por el Tester.
- 13: Obligatorio. Verificación: Release v1.0 con Docker y README, demostración al Propietario y acta de aceptación final.
- 14: Obligatorio. Verificación: Acta de cierre firmada, lecciones aprendidas e informe final entregados en Moodle.
- 16: Redactar el acta en la plantilla PM²: caso de negocio, alcance, criterios de éxito, hitos, riesgos y gobernanza; ajustarla según la retroalimentación (v1.1 y v1.2). Esfuerzo: 8 h. Responsable: Emmanuel Ospina. Ejecuta: Emmanuel Ospina.
- 17: Identificar las partes interesadas, asignar roles PM² y completar las fichas de los cinco interesados clave. Esfuerzo: 4 h. Responsable: Emmanuel Ospina. Ejecuta: Emmanuel Ospina.
- 19: Redactar los requisitos según ISO/IEC/IEEE 29148 y enlazarlos con necesidades, objetivos, EDT, pruebas e interesados (Matriz de Trazabilidad v1.0 a v1.3). Esfuerzo: 14 h. Responsable: Jahan Chará. Ejecuta: Jahan Chará.
- 20: Elaborar el diagrama UML de casos de uso con actores, relaciones «include» y «extend», y ajustarlo según la revisión del Propietario (v1.3). Esfuerzo: 6 h. Responsable: Jahan Chará. Ejecuta: Jahan Chará.
- 21: Clasificar cada requisito, estimar su esfuerzo y verificar la regla de control de esfuerzo de los Must. Esfuerzo: 4 h. Responsable: Emmanuel Ospina. Ejecuta: Emmanuel Ospina.
- 23: Documentar el enfoque, los roles, el enunciado del alcance, la validación y el control del alcance. Esfuerzo: 6 h. Responsable: Emmanuel Ospina. Ejecuta: Emmanuel Ospina.
- 24: Descomponer el alcance hasta paquetes de trabajo y describir cada elemento. Esfuerzo: 6 h. Responsable: Jahan Chará. Ejecuta: Jahan Chará.
- 25: Definir y secuenciar actividades, estimar duraciones, construir el diagrama de Gantt y fijar los hitos. Esfuerzo: 8 h. Responsable: Jahan Chará. Ejecuta: Jahan Chará.
- 26: Crear el repositorio con la rama main protegida, el tablero de GitHub Projects, las etiquetas y la etiqueta v0.1. Esfuerzo: 4 h. Responsable: Cristian Cruz. Ejecuta: Cristian Cruz.
- 27: Definir atributos, métricas, aseguramiento y control de calidad del producto y del proceso. Esfuerzo: 6 h. Responsable: Nestor Velasco. Ejecuta: Nestor Velasco.
- 28: Definir la estrategia de pruebas, los casos de prueba CP-xx y los criterios de salida. Esfuerzo: 3 h. Responsable: Nestor Velasco. Ejecuta: Nestor Velasco.

| ID | WBS | Task | Duration | Start | Finish | Predecessors | Resources |
| --- | --- | --- | --- | --- | --- | --- | --- |
| 29 | 5 | **Monitoreo y control** | 1d | 2026-10-12 | 2026-10-12 |  |  |
| 30 | 5.1 | 1301 · Realizar el seguimiento semanal TSP | 49d | 2026-10-12 | 2026-11-29 | 5 | Emmanuel Ospina |
| 31 | 5.2 | 1302 · Controlar los cambios del alcance y del cronograma | 49d | 2026-10-12 | 2026-11-29 | 5 | Emmanuel Ospina |
| 32 | 6 | **Diseño** | 1d | 2026-10-12 | 2026-10-12 |  |  |
| 33 | 6.1 | 3101 · Diseñar la arquitectura y el despliegue | 3d | 2026-10-12 | 2026-10-14 | 5 | Diego Agudelo |
| 34 | 6.2 | 3201 · Elaborar los diagramas UML de diseño | 4d | 2026-10-12 | 2026-10-15 | 5 | Jahan Chará |
| 35 | 6.3 | 3401 · Diseñar los prototipos de interfaz | 4d | 2026-10-12 | 2026-10-15 | 5 | Cristian Cruz |
| 36 | 6.4 | 3301 · Diseñar el modelo de datos y la API | 3d | 2026-10-15 | 2026-10-17 | 33 | Diego Agudelo |
| 37 | 6.5 | 3501 · Diseñar la escena 3D y construir el prototipo técnico | 3d | 2026-10-16 | 2026-10-18 | 35 | Cristian Cruz |
| 38 | 7 | **Construcción – 4.1 Simulador 3D** | 1d | 2026-10-19 | 2026-10-19 |  |  |
| 39 | 7.1 | 4101 · Desarrollar la escena 3D del tracto superior (RF-03.1) | 10d | 2026-10-19 | 2026-10-28 | 37 | Cristian Cruz |
| 40 | 7.2 | 4102 · Desarrollar el control del endoscopio virtual (RF-03.2) | 6d | 2026-10-29 | 2026-11-03 | 39 | Cristian Cruz |
| 41 | 7.3 | 4104 · Mostrar el hallazgo del caso en la escena 3D (RF-03.4) | 4d | 2026-11-04 | 2026-11-07 | 40, 52 | Cristian Cruz |
| 42 | 7.4 | 4103 · Desarrollar el registro de hitos anatómicos (RF-03.3) | 3d | 2026-11-08 | 2026-11-10 | 40 | Emmanuel Ospina |
| 43 | 7.5 | 4105 · Desarrollar la captura del hallazgo (RF-03.5) | 4d | 2026-11-08 | 2026-11-11 | 41 | Cristian Cruz |
| 44 | 7.6 | 4108 · Optimizar el rendimiento de la escena 3D (RNF-01) | 2d | 2026-11-12 | 2026-11-13 | 43 | Cristian Cruz |
| 45 | 7.7 | 4106 · Desarrollar el minimapa (RF-03.6) | 4d | 2026-11-14 | 2026-11-17 | 43 | Cristian Cruz |
| 46 | 7.8 | 4109 · Optimizar la carga de la escena 3D (RNF-02) | 2d | 2026-11-14 | 2026-11-15 | 44 | Nestor Velasco |
| 47 | 8 | **Construcción – 4.2 Generador de casos con IA** | 1d | 2026-10-18 | 2026-10-18 |  |  |
| 48 | 8.1 | 4205 · Implementar la selección de imágenes del dataset (RF-14.1) | 3d | 2026-10-18 | 2026-10-20 | 36 | Emmanuel Ospina |
| 49 | 8.2 | 4206 · Implementar la redacción de la historia clínica con IA (RF-14.2) | 4d | 2026-10-21 | 2026-10-24 | 48 | Emmanuel Ospina |
| 50 | 8.3 | 4201 · Implementar la solicitud de caso nuevo (RF-02.1) | 2d | 2026-10-23 | 2026-10-24 | 35, 36 | Jahan Chará |
| 51 | 8.4 | 4204 · Implementar la presentación del caso clínico (RF-04) | 2d | 2026-10-25 | 2026-10-26 | 50 | Jahan Chará |
| 52 | 8.5 | 4207 · Implementar la ubicación automática en la ruta 3D (RF-14.3) | 2d | 2026-10-25 | 2026-10-26 | 49 | Emmanuel Ospina |
| 53 | 8.6 | 4208 · Implementar la validación automática de casos (RF-14.4) | 3d | 2026-10-27 | 2026-10-29 | 52 | Emmanuel Ospina |
| 54 | 8.7 | 4209 · Implementar el almacenamiento de casos (RF-14.5) | 2d | 2026-10-30 | 2026-10-31 | 53 | Emmanuel Ospina |
| 55 | 8.8 | 4213 · Verificar la calidad del contenido generado (RNF-13) | 2d | 2026-10-30 | 2026-10-31 | 53 | Jahan Chará |
| 56 | 8.9 | 4214 · Optimizar el tiempo de generación de casos (RNF-14) | 2d | 2026-11-01 | 2026-11-02 | 54 | Emmanuel Ospina |
| 57 | 8.10 | 4210 · Implementar la revisión docente de casos (RF-14.6) | 3d | 2026-11-02 | 2026-11-04 | 54 | Diego Agudelo |
| 58 | 8.11 | 4203 · Implementar el historial y la repetición de casos (RF-02.3) | 2d | 2026-11-09 | 2026-11-10 | 54 | Diego Agudelo |
| 59 | 8.12 | 4212 · Auditar la privacidad de los datos (RNF-08) | 2d | 2026-11-12 | 2026-11-13 | 77 | Emmanuel Ospina |
| 60 | 8.13 | 4202 · Implementar la elección de región anatómica (RF-02.2) | 2d | 2026-11-14 | 2026-11-15 | 52 | Emmanuel Ospina |

Notes:
- 30: Reunión semanal: horas planeadas frente a reales, avance de actividades, riesgos y reporte semanal (formato WEEK). Esfuerzo: 14 h. Responsable: Emmanuel Ospina. Ejecuta: Emmanuel Ospina.
- 31: Registrar y analizar solicitudes de cambio y actualizar las líneas base cuando se aprueben. Esfuerzo: 3 h. Responsable: Emmanuel Ospina. Ejecuta: Emmanuel Ospina.
- 33: Definir componentes, tecnologías, servicios en la nube y diagramas de arquitectura y despliegue; registrar las decisiones (ADR). Esfuerzo: 8 h. Responsable: Diego Agudelo. Ejecuta: Diego Agudelo.
- 34: Diagramas de actividades, secuencia y paquetes de los flujos principales. Esfuerzo: 10 h. Responsable: Jahan Chará. Ejecuta: Jahan Chará.
- 35: Prototipos en Figma de las pantallas del estudiante (caso, 3D, decisión, tutor, retroalimentación) y del docente. Esfuerzo: 10 h. Responsable: Cristian Cruz. Ejecuta: Cristian Cruz.
- 36: Modelo entidad-relación, tablas de casos, intentos y eventos, y especificación de los endpoints. Esfuerzo: 8 h. Responsable: Diego Agudelo. Ejecuta: Diego Agudelo.
- 37: Definir ruta, regiones, hitos y controles; construir el spike: cámara que recorre la ruta y captura un hallazgo de prueba. Esfuerzo: 8 h. Responsable: Cristian Cruz. Ejecuta: Cristian Cruz.
- 39: Mostrar en el navegador una escena 3D navegable del esófago, el estómago y el duodeno, sin instalar software adicional. Esfuerzo: 30 h. Responsable: Cristian Cruz. Ejecuta: Cristian Cruz.
- 40: Permitir controlar el endoscopio virtual: avanzar, retroceder y orientar la punta, con teclado y con mouse. Esfuerzo: 16 h. Responsable: Cristian Cruz. Ejecuta: Cristian Cruz.
- 41: Mostrar en la escena 3D el hallazgo del caso en la ubicación asignada automáticamente por el generador de casos (RF-14.3). Esfuerzo: 10 h. Responsable: Cristian Cruz. Ejecuta: Cristian Cruz.
- 42: Marcar como visitados los hitos anatómicos (línea Z, cardias, fondo, cuerpo, antro, píloro y bulbo duodenal) cuando el endoscopio pase por ellos. Esfuerzo: 8 h. Responsable: Cristian Cruz. Ejecuta: Emmanuel Ospina.
- 43: Permitir capturar un hallazgo visible en el campo de visión; al capturarlo se abre el panel de análisis del caso con la imagen endoscópica asociada. Esfuerzo: 10 h. Responsable: Cristian Cruz. Ejecuta: Cristian Cruz.
- 44: La escena deberá mantener al menos 30 cuadros por segundo en un portátil con gráficos integrados a resolución 1366×768. Esfuerzo: 6 h. Responsable: Cristian Cruz. Ejecuta: Cristian Cruz.
- 45: Mostrar un minimapa con la posición actual del endoscopio dentro del tracto gastrointestinal. Esfuerzo: 10 h. Responsable: Cristian Cruz. Ejecuta: Cristian Cruz.
- 46: La escena de un caso deberá cargar en menos de 5 segundos con una conexión de 10 Mbps; los recursos 3D de cada caso no superarán 10 MB. Esfuerzo: 4 h. Responsable: Cristian Cruz. Ejecuta: Nestor Velasco.
- 48: Seleccionar para cada caso una imagen del tracto gastrointestinal superior del dataset (HyperKvasir), según la dificultad y la región solicitadas,… Esfuerzo: 8 h. Responsable: Emmanuel Ospina. Ejecuta: Emmanuel Ospina.
- 49: El agente de IA deberá redactar una historia clínica sintética coherente con la etiqueta de la imagen (edad, motivo de consulta, antecedentes y… Esfuerzo: 12 h. Responsable: Emmanuel Ospina. Ejecuta: Emmanuel Ospina.
- 50: Permitir al estudiante solicitar un caso nuevo eligiendo el nivel de dificultad (básico, intermedio o avanzado). Esfuerzo: 6 h. Responsable: Emmanuel Ospina. Ejecuta: Jahan Chará.
- 51: Presentar el caso con la historia clínica sintética redactada por el agente de IA, la imagen endoscópica asociada al hallazgo y el aviso de uso… Esfuerzo: 6 h. Responsable: Emmanuel Ospina. Ejecuta: Jahan Chará.
- 52: Asignar automáticamente la ubicación del hallazgo en la ruta 3D según la clase de la imagen, mediante una tabla de correspondencia clase–región,… Esfuerzo: 6 h. Responsable: Emmanuel Ospina. Ejecuta: Emmanuel Ospina.
- 53: Validar automáticamente cada caso generado antes de mostrarlo (campos completos, coherencia entre etiqueta, región e historia, y ausencia del… Esfuerzo: 8 h. Responsable: Emmanuel Ospina. Ejecuta: Emmanuel Ospina.
- 54: Guardar cada caso generado (imagen, historia, ubicación, versión del modelo y de las instrucciones, y semilla) para poder repetirlo y comparar… Esfuerzo: 4 h. Responsable: Emmanuel Ospina. Ejecuta: Emmanuel Ospina.
- 55: Calidad del contenido generado: la interfaz estará en español y el contenido clínico de los casos generados deberá ser coherente y verificable. Esfuerzo: 6 h. Responsable: Emmanuel Ospina. Ejecuta: Jahan Chará.
- 56: Un caso nuevo deberá estar listo para el estudiante en menos de 15 segundos en al menos el 90 % de las solicitudes. Esfuerzo: 4 h. Responsable: Emmanuel Ospina. Ejecuta: Emmanuel Ospina.
- 57: Permitir al docente revisar los casos generados y aprobarlos o descartarlos; un caso descartado no se vuelve a asignar y su motivo queda registrado. Esfuerzo: 8 h. Responsable: Emmanuel Ospina. Ejecuta: Diego Agudelo.
- 58: Mostrar el historial de casos resueltos por el estudiante y permitir repetir un caso guardado. Esfuerzo: 5 h. Responsable: Emmanuel Ospina. Ejecuta: Diego Agudelo.
- 59: El sistema solo usará imágenes públicas y desidentificadas (HyperKvasir, tracto superior) e historias clínicas sintéticas, y almacenará la… Esfuerzo: 4 h. Responsable: Emmanuel Ospina. Ejecuta: Emmanuel Ospina.
- 60: Permitir elegir la región anatómica del caso (esófago, estómago o duodeno); si el estudiante no la elige, el sistema la asigna al azar. Esfuerzo: 4 h. Responsable: Emmanuel Ospina. Ejecuta: Emmanuel Ospina.

| ID | WBS | Task | Duration | Start | Finish | Predecessors | Resources |
| --- | --- | --- | --- | --- | --- | --- | --- |
| 61 | 9 | **Construcción – 4.3 Componente de IA de visión** | 1d | 2026-10-16 | 2026-10-16 |  |  |
| 62 | 9.1 | 4304 · Entrenar y documentar el modelo de IA de visión (RNF-12) | 7d | 2026-10-16 | 2026-10-22 | 33 | Jahan Chará |
| 63 | 9.2 | 4301 · Mostrar la clase y la confianza de la IA (RF-06.1) | 2d | 2026-10-29 | 2026-10-30 | 62, 74 | Diego Agudelo |
| 64 | 9.3 | 4302 · Mostrar la región de interés (ROI) (RF-06.2) | 2d | 2026-10-31 | 2026-11-01 | 63 | Diego Agudelo |
| 65 | 10 | **Construcción – 4.4 Agente tutor e inyección de errores** | 1d | 2026-11-01 | 2026-11-01 |  |  |
| 66 | 10.1 | 4404 · Implementar la configuración del porcentaje de errores (RF-08.1) | 2d | 2026-11-01 | 2026-11-02 | 63 | Jahan Chará |
| 67 | 10.2 | 4401 · Implementar la conversación con el agente tutor (RF-07.1) | 5d | 2026-11-03 | 2026-11-07 | 54 | Emmanuel Ospina |
| 68 | 10.3 | 4405 · Implementar los tipos de alteración de la IA (RF-08.2) | 2d | 2026-11-03 | 2026-11-04 | 66 | Jahan Chará |
| 69 | 10.4 | 4406 · Registrar las alteraciones aplicadas (RF-08.3) | 1d | 2026-11-05 | 2026-11-05 | 68 | Jahan Chará |
| 70 | 10.5 | 4402 · Restringir al tutor para que no revele la respuesta (RF-07.2) | 1d | 2026-11-08 | 2026-11-08 | 67 | Jahan Chará |
| 71 | 10.6 | 4403 · Implementar el respaldo ante fallas del LLM (RF-07.3) | 1d | 2026-11-09 | 2026-11-09 | 67 | Jahan Chará |
| 72 | 10.7 | 4407 · Optimizar el tiempo de respuesta del tutor (RNF-03) | 1d | 2026-11-11 | 2026-11-11 | 67 | Emmanuel Ospina |
| 73 | 11 | **Construcción – 4.5 Evaluación, gamificación y registro** | 1d | 2026-10-27 | 2026-10-27 |  |  |
| 74 | 11.1 | 4501 · Implementar la decisión inicial y la confianza (RF-05) | 2d | 2026-10-27 | 2026-10-28 | 51 | Jahan Chará |
| 75 | 11.2 | 4502 · Implementar la decisión final (RF-09) | 1d | 2026-11-05 | 2026-11-05 | 64 | Diego Agudelo |
| 76 | 11.3 | 4503 · Implementar la retroalimentación y el puntaje (RF-10) | 3d | 2026-11-06 | 2026-11-08 | 75 | Diego Agudelo |
| 77 | 11.4 | 4505 · Implementar la telemetría del intento (RF-12) | 4d | 2026-11-06 | 2026-11-09 | 75 | Nestor Velasco |
| 78 | 11.5 | 4504 · Implementar puntos, niveles e insignias (RF-11) | 4d | 2026-11-10 | 2026-11-13 | 76 | Jahan Chará |
| 79 | 11.6 | 4507 · Implementar la exportación a CSV (RF-15) | 2d | 2026-11-10 | 2026-11-11 | 77 | Nestor Velasco |
| 80 | 11.7 | 4506 · Desarrollar el tablero de desempeño (RF-13) | 5d | 2026-11-14 | 2026-11-18 | 77 | Diego Agudelo |
| 81 | 12 | **Construcción – 4.6 Plataforma e integración** | 1d | 2026-10-15 | 2026-10-15 |  |  |
| 82 | 12.1 | 4612 · Empaquetar el sistema con Docker (RNF-10) | 3d | 2026-10-15 | 2026-10-17 | 33 | Nestor Velasco |
| 83 | 12.2 | 4601 · Implementar el registro de usuarios (RF-01.1) | 2d | 2026-10-18 | 2026-10-19 | 36 | Diego Agudelo |
| 84 | 12.3 | 4611 · Construir las pruebas automatizadas y la integración continua (RNF-09) | 35d | 2026-10-19 | 2026-11-22 | 9 | Nestor Velasco |
| 85 | 12.4 | 4602 · Implementar el inicio y cierre de sesión (RF-01.2) | 1d | 2026-10-20 | 2026-10-20 | 83 | Diego Agudelo |
| 86 | 12.5 | 4605 · Implementar la verificación en dos pasos (2FA) (RF-01.5) | 3d | 2026-10-21 | 2026-10-23 | 85 | Diego Agudelo |
| 87 | 12.6 | 4604 · Implementar el consentimiento y el aviso académico (RF-01.4) | 1d | 2026-10-24 | 2026-10-24 | 86 | Nestor Velasco |
| 88 | 12.7 | 4606 · Implementar la activación de 2FA y los códigos de recuperación (RF-01.6) | 2d | 2026-10-24 | 2026-10-25 | 86 | Diego Agudelo |
| 89 | 12.8 | 4610 · Implementar los controles de seguridad (RNF-07) | 2d | 2026-10-26 | 2026-10-27 | 88 | Nestor Velasco |
| 90 | 12.9 | 4603 · Implementar la gestión de roles (RF-01.3) | 2d | 2026-11-11 | 2026-11-12 | 85 | Diego Agudelo |
| 91 | 12.10 | 4609 · Asegurar la compatibilidad con navegadores (RNF-06) | 2d | 2026-11-12 | 2026-11-13 | 43 | Nestor Velasco |
| 92 | 12.11 | 4607 · Implementar el restablecimiento de 2FA por el administrador (RF-01.7) | 1d | 2026-11-13 | 2026-11-13 | 88 | Diego Agudelo |
| 93 | 12.12 | 4608 · Optimizar la carga de pantallas (RNF-04) | 2d | 2026-11-19 | 2026-11-20 | 76 | Diego Agudelo |
| 94 | 12.13 | 4613 · Configurar el monitoreo de disponibilidad (RNF-11) | 1d | 2026-11-20 | 2026-11-20 | 82 | Cristian Cruz |

Notes:
- 62: El entrenamiento del modelo de visión deberá poder repetirse y sus métricas deberán reportarse. Esfuerzo: 20 h. Responsable: Diego Agudelo. Ejecuta: Jahan Chará.
- 63: Mostrar la clase sugerida por la IA y su porcentaje de confianza. Esfuerzo: 6 h. Responsable: Diego Agudelo. Ejecuta: Diego Agudelo.
- 64: Marcar sobre la imagen la región de interés (ROI) en la que se basa la recomendación. Esfuerzo: 6 h. Responsable: Diego Agudelo. Ejecuta: Diego Agudelo.
- 66: Permitir al docente configurar el porcentaje de intentos con recomendación alterada, entre 0 % y 50 %. Esfuerzo: 5 h. Responsable: Emmanuel Ospina. Ejecuta: Jahan Chará.
- 67: Permitir conversar con el tutor; cada respuesta tendrá en cuenta la historia clínica, la decisión inicial del usuario y la recomendación mostrada. Esfuerzo: 14 h. Responsable: Emmanuel Ospina. Ejecuta: Emmanuel Ospina.
- 68: Permitir elegir el tipo de alteración: clase incorrecta, confianza alterada o región de interés desplazada. Esfuerzo: 6 h. Responsable: Emmanuel Ospina. Ejecuta: Jahan Chará.
- 69: Registrar en cada intento si la recomendación fue alterada y de qué forma, sin mostrarlo al usuario antes de la retroalimentación. Esfuerzo: 3 h. Responsable: Emmanuel Ospina. Ejecuta: Jahan Chará.
- 70: El tutor no debe revelar la respuesta de referencia antes de que el usuario registre su decisión final. Esfuerzo: 3 h. Responsable: Emmanuel Ospina. Ejecuta: Jahan Chará.
- 71: Mostrar un mensaje de respaldo y permitir continuar el caso cuando el servicio del modelo de lenguaje no responda. Esfuerzo: 3 h. Responsable: Emmanuel Ospina. Ejecuta: Jahan Chará.
- 72: El tutor deberá responder en menos de 10 segundos en al menos el 90 % de los mensajes. Esfuerzo: 3 h. Responsable: Emmanuel Ospina. Ejecuta: Emmanuel Ospina.
- 74: Exigir que el usuario registre su decisión inicial y su nivel de confianza (1 a 5) antes de mostrar la recomendación de la IA. Esfuerzo: 5 h. Responsable: Diego Agudelo. Ejecuta: Jahan Chará.
- 75: Registrar la decisión final del usuario y su nivel de confianza, e identificar si cambió respecto a la decisión inicial. Esfuerzo: 3 h. Responsable: Diego Agudelo. Ejecuta: Diego Agudelo.
- 76: Mostrar la retroalimentación del intento: respuesta de referencia, acierto del usuario, acierto de la IA (indicando si fue alterada), explicación… Esfuerzo: 8 h. Responsable: Diego Agudelo. Ejecuta: Diego Agudelo.
- 77: Registrar la telemetría de cada intento: tiempo de exploración, hitos visitados, hallazgos detectados y omitidos, decisiones con sus tiempos y… Esfuerzo: 10 h. Responsable: Diego Agudelo. Ejecuta: Nestor Velasco.
- 78: Otorgar puntos, niveles e insignias según el desempeño del usuario. Esfuerzo: 12 h. Responsable: Diego Agudelo. Ejecuta: Jahan Chará.
- 79: Permitir al docente exportar a CSV los registros seudonimizados de los intentos. Esfuerzo: 4 h. Responsable: Diego Agudelo. Ejecuta: Nestor Velasco.
- 80: Mostrar a cada estudiante un tablero con su desempeño: precisión de decisiones, detección de errores de la IA, sobre-dependencia y cobertura de… Esfuerzo: 14 h. Responsable: Diego Agudelo. Ejecuta: Diego Agudelo.
- 82: El sistema deberá poder instalarse y ejecutarse con un solo comando a partir del repositorio. Esfuerzo: 8 h. Responsable: Diego Agudelo. Ejecuta: Nestor Velasco.
- 83: Permitir que una persona se registre con correo electrónico y contraseña; la cuenta nueva tendrá rol de estudiante. Esfuerzo: 4 h. Responsable: Diego Agudelo. Ejecuta: Diego Agudelo.
- 84: Los módulos críticos tendrán pruebas automatizadas y todo cambio se integrará mediante pull request revisado. Esfuerzo: 20 h. Responsable: Diego Agudelo. Ejecuta: Nestor Velasco.
- 85: Permitir iniciar y cerrar sesión, y mantener la sesión activa mientras el usuario navega. Esfuerzo: 3 h. Responsable: Diego Agudelo. Ejecuta: Diego Agudelo.
- 86: Exigir verificación en dos pasos (2FA) en cada inicio de sesión: después de la contraseña, el usuario ingresará un código temporal de 6 dígitos… Esfuerzo: 8 h. Responsable: Diego Agudelo. Ejecuta: Diego Agudelo.
- 87: Mostrar al primer ingreso el aviso de uso académico (no diagnóstico) y la autorización de tratamiento de datos, y registrar su aceptación. Esfuerzo: 3 h. Responsable: Diego Agudelo. Ejecuta: Nestor Velasco.
- 88: Guiar la activación del 2FA en el primer ingreso (código QR para la aplicación autenticadora) y entregar 10 códigos de recuperación de un solo uso. Esfuerzo: 6 h. Responsable: Diego Agudelo. Ejecuta: Diego Agudelo.
- 89: El acceso usará autenticación de dos factores (2FA), las contraseñas se almacenarán con hash, toda la comunicación usará HTTPS y ninguna… Esfuerzo: 5 h. Responsable: Diego Agudelo. Ejecuta: Nestor Velasco.
- 90: Permitir que un docente/administrador asigne o retire el rol de docente a otra cuenta. Esfuerzo: 4 h. Responsable: Diego Agudelo. Ejecuta: Diego Agudelo.
- 91: El sistema deberá funcionar en las dos últimas versiones de Chrome, Firefox y Edge con soporte WebGL 2, en escritorio. Esfuerzo: 4 h. Responsable: Diego Agudelo. Ejecuta: Nestor Velasco.
- 92: Permitir que un administrador restablezca el 2FA de una cuenta que perdió su aplicación autenticadora y sus códigos, dejando registro de la acción. Esfuerzo: 3 h. Responsable: Diego Agudelo. Ejecuta: Diego Agudelo.
- 93: Las pantallas que no son 3D deberán cargar en menos de 3 segundos. Esfuerzo: 4 h. Responsable: Diego Agudelo. Ejecuta: Diego Agudelo.
- 94: El sistema publicado deberá estar disponible al menos el 95 % del tiempo durante el periodo de pruebas y la demostración final. Esfuerzo: 3 h. Responsable: Diego Agudelo. Ejecuta: Cristian Cruz.

| ID | WBS | Task | Duration | Start | Finish | Predecessors | Resources |
| --- | --- | --- | --- | --- | --- | --- | --- |
| 95 | 13 | **Pruebas** | 1d | 2026-10-19 | 2026-10-19 |  |  |
| 96 | 13.1 | 5101 · Ejecutar las pruebas unitarias y de integración | 35d | 2026-10-19 | 2026-11-22 | 9 | Nestor Velasco |
| 97 | 13.2 | 5201 · Ejecutar las pruebas funcionales | 6d | 2026-11-16 | 2026-11-21 | 11 | Nestor Velasco |
| 98 | 13.3 | 5401 · Realizar las pruebas de usabilidad (SUS) | 3d | 2026-11-16 | 2026-11-18 | 11 | Emmanuel Ospina |
| 99 | 13.4 | 5301 · Ejecutar las pruebas de rendimiento | 2d | 2026-11-18 | 2026-11-19 | 11 | Cristian Cruz |
| 100 | 13.5 | 5202 · Corregir los defectos encontrados en las pruebas | 3d | 2026-11-22 | 2026-11-24 | 97 | Jahan Chará |
| 101 | 14 | **Cierre** | 1d | 2026-11-23 | 2026-11-23 |  |  |
| 102 | 14.1 | 1401 · Documentar las lecciones aprendidas | 2d | 2026-11-23 | 2026-11-24 | 12 | Nestor Velasco |
| 103 | 14.2 | 1402 · Elaborar el informe final y la demostración | 2d | 2026-11-23 | 2026-11-24 | 12 | Cristian Cruz |
| 104 | 14.3 | 1404 · Publicar la versión 1.0 | 1d | 2026-11-25 | 2026-11-25 | 12, 100 | Diego Agudelo |
| 105 | 14.4 | 1403 · Elaborar el acta de cierre | 1d | 2026-11-26 | 2026-11-26 | 102, 103, 104 | Emmanuel Ospina |

Notes:
- 96: Ejecutar y mantener la suite automatizada en cada pull request; reporte de CI por ciclo. Esfuerzo: 12 h. Responsable: Nestor Velasco. Ejecuta: Nestor Velasco.
- 97: Ejecutar los casos de prueba CP-xx de la Matriz de Trazabilidad sobre la versión v0.9 y registrar los defectos. Esfuerzo: 16 h. Responsable: Nestor Velasco. Ejecuta: Nestor Velasco.
- 98: Sesiones con al menos 10 participantes con consentimiento informado y análisis del cuestionario SUS. Esfuerzo: 8 h. Responsable: Nestor Velasco. Ejecuta: Emmanuel Ospina.
- 99: Medir FPS de la escena 3D y tiempos de carga, del tutor y de generación de casos. Esfuerzo: 6 h. Responsable: Nestor Velasco. Ejecuta: Cristian Cruz.
- 100: Corregir los defectos críticos y mayores reportados y volver a probar. Esfuerzo: 8 h. Responsable: Diego Agudelo. Ejecuta: Jahan Chará.
- 102: Consolidar los postmortem de los tres ciclos TSP en el registro de lecciones aprendidas. Esfuerzo: 4 h. Responsable: Cristian Cruz. Ejecuta: Nestor Velasco.
- 103: Redactar el informe final, preparar la presentación y la demostración del producto. Esfuerzo: 6 h. Responsable: Cristian Cruz. Ejecuta: Cristian Cruz.
- 104: Etiquetar la release v1.0 con Docker, README y documentación de la API. Esfuerzo: 3 h. Responsable: Cristian Cruz. Ejecuta: Diego Agudelo.
- 105: Redactar el acta de cierre con la aceptación final del Propietario del Proyecto. Esfuerzo: 2 h. Responsable: Cristian Cruz. Ejecuta: Emmanuel Ospina.
